# GestorStand

Schedule from MS Project, 2019-03-11 to 2019-05-14, costs in €, A marks actual dates.

## Calendars

- 24 Horas: Mon-Sun 00:00-24:00.

## Resources

| Resource |
| --- |
| Rui Penetra |
| Filipe Ferreira |

## Schedule

| ID | WBS | Task | Type | Duration | Start | Finish | Predecessors | Complete | Remaining | Total slack | Free slack | Constraint | Resources | Work | Actual work | Cost | Actual cost |
| --- | --- | --- | --- | --- | --- | --- | --- | --- | --- | --- | --- | --- | --- | --- | --- | --- | --- |
| 1 | 1 | **GesStand** |  | 193.12d | 2019-03-11 A | 2019-05-14 |  | 4% | 184.71d | 0d |  |  |  | 616h | 120h | 2,000 | 250 |
| 2 | 1.1 | **Planeamento** |  | 52.12d | 2019-03-11 A | 2019-03-28 |  | 55% | 23.69d | 40.88d | 1.88d |  |  | 200h | 120h | 450 | 250 |
| 3 | 1.1.1 | **Planeamento 1ºEntrega** |  | 31.12d | 2019-03-11 A | 2019-03-21 A |  | 100% |  |  |  |  |  | 120h | 120h | 250 | 250 |
| 4 | 1.1.1.1 | Interpretação do Enunciado |  | 3d | 2019-03-11 A | 2019-03-13 A |  | 100% |  |  |  |  | Rui Penetra; Filipe Ferreira | 48h | 48h | 50 | 50 |
| 5 | 1.1.1.2 | Relatório de Especificação de Requisitos do Sistema |  | 6d | 2019-03-14 A | 2019-03-21 A | 4 | 100% |  |  |  |  | Filipe Ferreira | 48h | 48h | 100 | 100 |
| 6 | 1.1.1.3 | Relatório de Planeamento |  | 3d | 2019-03-14 A | 2019-03-18 A | 4 | 100% |  |  |  |  | Rui Penetra | 24h | 24h | 100 | 100 |
| 7 | 1.1.1.4 | Conclusão do Planeamento da 1ªEntrega | milestone | 0d | 2019-03-21 A | 2019-03-21 A | 4, 5, 6 | 100% |  |  |  |  |  |  |  |  |  |
| 8 | 1.1.2 | **Planeamento 2º Entrega** |  | 28.12d | 2019-03-19 | 2019-03-28 |  |  |  | 40.88d |  |  |  | 80h |  | 200 |  |
| 9 | 1.1.2.1 | Relatório de Scrum |  | 5d | 2019-03-22 | 2019-03-28 | 5 |  |  | 39d | 0d |  | Filipe Ferreira | 40h |  | 100 |  |
| 10 | 1.1.2.2 | Relatório Final de gestão de Projeto |  | 5d | 2019-03-19 | 2019-03-25 | 6 |  |  | 48d | 9d |  | Rui Penetra | 40h |  | 100 |  |
| 11 | 1.1.2.3 | Conclusão do Planeamento da 2ªEntrega | milestone | 0d | 2019-03-28 | 2019-03-28 | 9, 10 |  |  | 40.88d |  |  |  |  |  |  |  |
| 12 | 1.2 | **Implementação** |  | 139.12d | 2019-03-29 | 2019-05-14 |  |  |  | 0d |  |  |  | 416h |  | 1,550 |  |
| 13 | 1.2.1 | Criação da base de dados |  | 1d | 2019-03-29 | 2019-03-29 | 2 |  |  | 39d | 7.88d |  | Rui Penetra | 8h |  | 600 |  |
| 14 | 1.2.2 | **Gestão Clientes** |  | 31.12d | 2019-04-01 | 2019-04-11 |  |  |  | 33d |  |  |  | 184h |  | 250 |  |
| 15 | 1.2.2.1 | Layout da Página Clientes |  | 9d | 2019-04-01 | 2019-04-11 |  |  |  | 93d |  | start no earlier than 2019-04-01 | Rui Penetra | 72h |  |  |  |
| 16 | 1.2.2.2 | Inserir Clientes |  | 3d | 2019-04-01 | 2019-04-03 | 13 |  |  | 33d | 1.88d |  | Rui Penetra | 24h |  | 50 |  |
| 17 | 1.2.2.3 | Eliminar Clientes |  | 3d | 2019-04-04 | 2019-04-08 | 16 |  |  | 33d | 1.88d |  | Filipe Ferreira | 24h |  | 50 |  |
| 18 | 1.2.2.4 | Editar Clientes |  | 3d | 2019-04-04 | 2019-04-08 | 16 |  |  | 42d | 1.88d |  | Rui Penetra | 24h |  | 50 |  |
| 19 | 1.2.2.5 | Pesquisar Clientes |  | 3d | 2019-04-09 | 2019-04-11 | 17 |  |  | 39d | 1.88d |  | Filipe Ferreira | 24h |  | 50 |  |
| 20 | 1.2.2.6 | Mostrar Clientes |  | 2d | 2019-04-09 | 2019-04-10 | 18 |  |  | 42d | 1.88d |  | Rui Penetra | 16h |  | 50 |  |
| 21 | 1.2.2.7 | Conclusão da Página Clientes | milestone | 0d | 2019-04-11 | 2019-04-11 |  |  |  | 100.12d |  | start no earlier than 2019-04-11 |  |  |  |  |  |
| 22 | 1.2.3 | **Gestão Oficina** |  | 34.12d | 2019-04-11 | 2019-04-22 |  |  |  | 42d |  |  |  | 112h |  | 350 |  |
| 23 | 1.2.3.1 | Layout da Página Oficina |  | 31.12d | 2019-04-12 | 2019-04-22 |  |  |  | 66d |  | start no earlier than 2019-04-12 |  |  |  |  |  |
| 24 | 1.2.3.2 | **Carros** |  | 25.12d | 2019-04-11 | 2019-04-19 |  |  |  | 39d |  |  |  | 80h |  | 250 |  |
| 25 | 1.2.3.2.1 | Inserir Carros |  | 3d | 2019-04-12 | 2019-04-16 | 19 |  |  | 39d | 1.88d |  | Filipe Ferreira | 24h |  | 50 |  |
| 26 | 1.2.3.2.2 | Eliminar Carros |  | 2d | 2019-04-11 | 2019-04-12 | 20 |  |  | 42d | 7.88d |  | Rui Penetra | 16h |  | 50 |  |
| 27 | 1.2.3.2.3 | Editar Carros |  | 2d | 2019-04-15 | 2019-04-16 | 26 |  |  | 42d | 1.88d |  | Rui Penetra | 16h |  | 50 |  |
| 28 | 1.2.3.2.4 | Pesquisar Carros |  | 2d | 2019-04-17 | 2019-04-18 | 25 |  |  | 39d | 1.88d |  | Filipe Ferreira | 16h |  | 50 |  |
| 29 | 1.2.3.2.5 | Mostrar Carros |  | 1d | 2019-04-19 | 2019-04-19 | 28 |  |  | 39d | 7.88d |  | Filipe Ferreira | 8h |  | 50 |  |
| 30 | 1.2.3.3 | Inserir o Tipo de Serviço |  | 2d | 2019-04-17 | 2019-04-18 | 27 |  |  | 42d | 1.88d |  | Rui Penetra | 16h |  | 50 |  |
| 31 | 1.2.3.4 | Inserir o Valor a Despender |  | 2d | 2019-04-19 | 2019-04-22 | 30 |  |  | 42d | 1.88d |  | Rui Penetra | 16h |  | 50 |  |
| 32 | 1.2.3.5 | Conclusão da Página Oficina | milestone | 0d | 2019-04-22 | 2019-04-22 |  |  |  | 67.12d |  | start no earlier than 2019-04-22 |  |  |  |  |  |

| ID | WBS | Task | Type | Duration | Start | Finish | Predecessors | Total slack | Free slack | Constraint | Resources | Work | Cost |
| --- | --- | --- | --- | --- | --- | --- | --- | --- | --- | --- | --- | --- | --- |
| 33 | 1.2.4 | **Gestão Vendas** |  | 28.12d | 2019-04-22 | 2019-05-01 |  | 33d |  |  |  | 64h | 200 |
| 34 | 1.2.4.1 | Layout da Página Vendas |  | 25.12d | 2019-04-23 | 2019-05-01 |  | 39d |  | finish no earlier than 2019-05-01 |  |  |  |
| 35 | 1.2.4.2 | **Carros** |  | 10.12d | 2019-04-22 | 2019-04-25 |  | 33d |  |  |  | 48h | 150 |
| 36 | 1.2.4.2.1 | Mostrar carros para vender |  | 2d | 2019-04-23 | 2019-04-24 | 31 | 42d | 1.88d |  | Rui Penetra | 16h | 50 |
| 37 | 1.2.4.2.2 | Mostrar carros já vendidos |  | 2d | 2019-04-22 | 2019-04-23 | 29 | 33d | 1.88d |  | Filipe Ferreira | 16h | 50 |
| 38 | 1.2.4.2.3 | Inserir carros vendidos |  | 2d | 2019-04-24 | 2019-04-25 | 37 | 39d | 1.88d |  | Filipe Ferreira | 16h | 50 |
| 39 | 1.2.4.3 | Inserir Extras do carro |  | 2d | 2019-04-25 | 2019-04-26 | 36 | 42d | 7.88d |  | Rui Penetra | 16h | 50 |
| 40 | 1.2.4.4 | Conclusão da Página Vendas | milestone | 0d | 2019-04-26 | 2019-04-26 |  | 49.12d | 0d | start no earlier than 2019-04-26 |  |  |  |
| 41 | 1.2.5 | **Gestão Aluguer** |  | 21d | 2019-04-26 | 2019-05-03 |  | 34.12d |  |  |  | 48h | 150 |
| 42 | 1.2.5.1 | Layout da Página aluguer |  | 6d | 2019-04-26 | 2019-04-28 | 40 | 49.12d |  |  |  |  |  |
| 43 | 1.2.5.2 | **Carros** |  | 16.12d | 2019-04-26 | 2019-05-01 |  | 39d |  |  |  | 32h | 100 |
| 44 | 1.2.5.2.1 | Mostrar carros para aluguar |  | 2d | 2019-04-26 | 2019-04-29 | 38 | 33d | 1.88d |  | Filipe Ferreira | 16h | 50 |
| 45 | 1.2.5.2.2 | Mostrar Carros já alugados |  | 2d | 2019-04-30 | 2019-05-01 | 44 | 39d |  |  | Filipe Ferreira | 16h | 50 |
| 46 | 1.2.5.3 | Atribuir carros a clientes |  | 2d | 2019-04-29 | 2019-04-30 | 39 | 42d |  |  | Rui Penetra | 16h | 50 |
| 47 | 1.2.5.4 | Conclusão da Página Aluguer | milestone | 0d | 2019-05-03 | 2019-05-03 |  | 34.12d |  | start no earlier than 2019-05-03 |  |  |  |
| 48 | 1.2.6 | Testes |  | 139.12d | 2019-03-29 | 2019-05-14 |  | 0d |  | finish no earlier than 2019-05-14 |  |  |  |
